# Salesforce Service Cloud 150-Seat Contact Centre Transition

Schedule from MS Project XML, 2026-11-30 to 2027-02-26.
Portfolio simulation aligned to Program Manager SPO interview guide

## Calendars

- Standard: Mon-Fri 08:00-12:00, 13:00-17:00; Sat-Sun off.

## Schedule

| ID | WBS | Task | Duration | Start | Finish | Predecessors | Work |
| --- | --- | --- | --- | --- | --- | --- | --- |
| 1 | 1.1 | Mobilization and transition authorization | 2d | 2026-11-30 | 2026-12-01 |  | 16h |
| 2 | 1.2 | SOW review and contractual requirements | 3d | 2026-11-30 | 2026-12-02 | 1SS | 24h |
| 3 | 1.3 | Confirm objectives, scope and success measures | 3d | 2026-12-01 | 2026-12-03 | 1SS | 24h |
| 4 | 1.4 | Approve project charter and governance | 2d | 2026-12-03 | 2026-12-04 | 2, 3SS | 16h |
| 5 | 1.5 | Stakeholder register, RACI and communication plan | 3d | 2026-12-01 | 2026-12-03 | 1SS | 24h |
| 6 | 1.6 | Kickoff and integrated baseline approval | 1d | 2026-12-07 | 2026-12-07 | 4, 5 | 8h |
| 7 | 2.1 | Current-state discovery workshops | 5d | 2026-12-07 | 2026-12-11 | 6SS | 40h |
| 8 | 2.2 | Requirements and acceptance criteria | 4d | 2026-12-11 | 2026-12-16 | 7SS | 32h |
| 9 | 2.3 | Feasibility, volumes, service windows and staffing assessment | 4d | 2026-12-10 | 2026-12-15 | 7SS | 32h |
| 10 | 2.4 | To-Be workflows, case taxonomy and service model | 4d | 2026-12-17 | 2026-12-22 | 8, 9 | 32h |
| 11 | 2.5 | Solution architecture and CTI integration design | 4d | 2026-12-17 | 2026-12-22 | 8 | 32h |
| 12 | 2.6 | Security, network, identity and infrastructure readiness | 4d | 2026-12-07 | 2026-12-10 | 6SS | 32h |
| 13 | 3.1 | Confirm Salesforce org, environments and licence requirements | 2d | 2026-12-23 | 2026-12-24 | 11 | 16h |
| 14 | 3.2 | Provision 150 licences and user access | 3d | 2026-12-25 | 2026-12-29 | 13 | 24h |
| 15 | 3.3 | Configure CRM objects, fields, layouts and record types | 6d | 2026-12-23 | 2026-12-30 | 11, 13SS | 48h |
| 16 | 3.4 | Configure roles, profiles, permissions and sharing | 4d | 2026-12-23 | 2026-12-28 | 11, 13SS | 32h |
| 17 | 3.5 | Configure cases, queues, assignment and escalation rules | 5d | 2026-12-31 | 2027-01-06 | 10, 15, 16 | 40h |
| 18 | 3.6 | Configure reports, dashboards and SLA visibility | 4d | 2027-01-07 | 2027-01-12 | 17 | 32h |
| 19 | 3.7 | Design Avaya CTI connector and softphone integration | 4d | 2026-12-23 | 2026-12-28 | 11, 12, 13SS | 32h |
| 20 | 3.8 | Build CTI, screen-pop and call logging | 6d | 2026-12-30 | 2027-01-06 | 19, 15SS | 48h |
| 21 | 3.9 | Network, firewall and telephony connectivity tests | 3d | 2027-01-07 | 2027-01-11 | 12, 20 | 24h |
| 22 | 4.1 | Inventory legacy data and profile data quality | 4d | 2026-12-14 | 2026-12-17 | 8SS | 32h |
| 23 | 4.2 | Approve source-to-target mapping and cleansing rules | 3d | 2026-12-18 | 2026-12-22 | 22 | 24h |
| 24 | 4.3 | Cleanse and deduplicate legacy customer and case data | 5d | 2026-12-23 | 2026-12-29 | 23 | 40h |
| 25 | 4.4 | Test migration and reconcile records | 3d | 2027-01-01 | 2027-01-05 | 24, 15 | 24h |
| 26 | 4.5 | Resolve migration exceptions and obtain approval | 2d | 2027-01-06 | 2027-01-07 | 25 | 16h |
| 27 | 5.1 | SIT strategy, test cases and traceability matrix | 3d | 2027-01-05 | 2027-01-07 | 10, 17SS, 20SS | 24h |
| 28 | 5.2 | Execute CRM and CTI system integration testing | 3d | 2027-01-08 | 2027-01-12 | 18SS, 21SS, 26, 27 | 24h |
| 29 | 5.3 | Resolve critical defects and regression test | 3d | 2027-01-13 | 2027-01-15 | 28 | 24h |
| 30 | 5.4 | Prepare UAT scripts and entry/exit criteria | 3d | 2027-01-08 | 2027-01-12 | 27 | 24h |
| 31 | 5.5 | Execute business UAT | 4d | 2027-01-18 | 2027-01-21 | 29, 30 | 32h |
| 32 | 5.6 | Close UAT defects and secure acceptance | 1d | 2027-01-22 | 2027-01-22 | 31 | 8h |
| 33 | 6.1 | Develop SOPs, knowledge base and training materials | 6d | 2027-01-04 | 2027-01-11 | 10, 17SS, 20SS | 48h |
| 34 | 6.2 | Develop 150-seat hiring and workforce plan | 4d | 2026-12-16 | 2026-12-21 | 6, 9 | 32h |
| 35 | 6.3 | Build WFM roster and training backfill plan | 3d | 2026-12-22 | 2026-12-24 | 34 | 24h |
| 36 | 6.4 | Train-the-Trainer and super-user certification | 2d | 2027-01-25 | 2027-01-26 | 32, 33, 35 | 16h |
| 37 | 6.5 | Train agents in cohorts and assess competency | 4d | 2027-01-27 | 2027-02-01 | 36 | 32h |
| 38 | 6.6 | Validate access and agent readiness | 1d | 2027-02-02 | 2027-02-02 | 14, 37 | 8h |
| 39 | 7.1 | Cutover rehearsal, communications and rollback plan | 4d | 2027-01-28 | 2027-02-02 | 32 | 32h |
| 40 | 7.2 | Operational readiness assessment and go/no-go pack | 1d | 2027-02-03 | 2027-02-03 | 39, 38 | 8h |
| 41 | 7.3 | Pilot 30 agents with floor-walker support | 5d | 2027-02-04 | 2027-02-10 | 40 | 40h |
| 42 | 7.4 | Evaluate pilot KPIs, defects and adoption | 2d | 2027-02-11 | 2027-02-12 | 41 | 16h |
| 43 | 7.5 | Steering go/no-go decision | 1d | 2027-02-15 | 2027-02-15 | 42 | 8h |
| 44 | 8.1 | Wave 1 cutover: 60 agents | 1d | 2027-02-16 | 2027-02-16 | 43 | 8h |
| 45 | 8.2 | Wave 1 stabilization and issue resolution | 2d | 2027-02-17 | 2027-02-18 | 44 | 16h |
| 46 | 8.3 | Wave 2 cutover: remaining 60 agents | 1d | 2027-02-19 | 2027-02-19 | 45 | 8h |
| 47 | 8.4 | Confirm all 150 agents active and queues stable | 1d | 2027-02-22 | 2027-02-22 | 46 | 8h |
| 48 | 9.1 | Hypercare and daily incident triage | 3d | 2027-02-23 | 2027-02-25 | 47 | 24h |
| 49 | 9.2 | Monitor SLA, AHT, FCR, CSAT, abandon rate and uptime | 3d | 2027-02-23 | 2027-02-25 | 47 | 24h |
| 50 | 9.3 | Knowledge transfer to BAU support and operations | 3d | 2027-02-23 | 2027-02-25 | 47 | 24h |
| 51 | 9.4 | BAU acceptance, closure and lessons learned | 1d | 2027-02-26 | 2027-02-26 | 48, 49, 50 | 8h |

Notes:
- 1: Owner: Program Manager; Workstream: Mobilization; Portfolio simulation.
- 2: Owner: PM / Sponsor; Workstream: Initiation; Portfolio simulation.
- 3: Owner: PM / Operations; Workstream: Initiation; Portfolio simulation.
- 4: Owner: Executive Sponsor; Workstream: Governance; Portfolio simulation.
- 5: Owner: PMO Lead; Workstream: Governance; Portfolio simulation.
- 6: Owner: Program Manager; Workstream: Governance; Portfolio simulation.
- 7: Owner: BA / Operations; Workstream: Discovery; Portfolio simulation.
- 8: Owner: Business Analyst; Workstream: Discovery; Portfolio simulation.
- 9: Owner: Operations / WFM; Workstream: Discovery; Portfolio simulation.
- 10: Owner: BA / Operations; Workstream: Design; Portfolio simulation.
- 11: Owner: Solution Architect; Workstream: Design; Portfolio simulation.
- 12: Owner: IT / Security; Workstream: Design; Portfolio simulation.
- 13: Owner: Salesforce Lead; Workstream: Platform; Portfolio simulation.
- 14: Owner: Client IT Admin; Workstream: Platform; Portfolio simulation.
- 15: Owner: Salesforce Team; Workstream: Build; Portfolio simulation.
- 16: Owner: Salesforce Admin; Workstream: Build; Portfolio simulation.
- 17: Owner: Salesforce Team; Workstream: Build; Portfolio simulation.
- 18: Owner: Salesforce / WFM; Workstream: Build; Portfolio simulation.
- 19: Owner: CTI Lead; Workstream: Integration; Portfolio simulation.
- 20: Owner: CTI / Salesforce; Workstream: Integration; Portfolio simulation.
- 21: Owner: Infrastructure / CTI; Workstream: Integration; Portfolio simulation.
- 22: Owner: Data Lead; Workstream: Migration; Portfolio simulation.
- 23: Owner: Data / Business Owners; Workstream: Migration; Portfolio simulation.
- 24: Owner: Data Team; Workstream: Migration; Portfolio simulation.
- 25: Owner: Data / QA; Workstream: Migration; Portfolio simulation.
- 26: Owner: Data Lead; Workstream: Migration; Portfolio simulation.
- 27: Owner: QA / BA; Workstream: Testing; Portfolio simulation.
- 28: Owner: QA / IT; Workstream: Testing; Portfolio simulation.
- 29: Owner: Tech / QA; Workstream: Testing; Portfolio simulation.
- 30: Owner: BA / QA; Workstream: Testing; Portfolio simulation.
- 31: Owner: Operations / QA; Workstream: Testing; Portfolio simulation.
- 32: Owner: Product Owner; Workstream: Testing; Portfolio simulation.
- 33: Owner: Training / Ops; Workstream: Readiness; Portfolio simulation.
- 34: Owner: HR / WFM; Workstream: Readiness; Portfolio simulation.
- 35: Owner: WFM Lead; Workstream: Readiness; Portfolio simulation.
- 36: Owner: Training Lead; Workstream: Readiness; Portfolio simulation.
- 37: Owner: Training / Ops; Workstream: Readiness; Portfolio simulation.
- 38: Owner: IT / Operations; Workstream: Readiness; Portfolio simulation.
- 39: Owner: PM / IT / Ops; Workstream: Cutover; Portfolio simulation.
- 40: Owner: PMO / Operations; Workstream: Readiness; Portfolio simulation.
- 41: Owner: Operations / IT / QA; Workstream: Pilot; Portfolio simulation.
- 42: Owner: PM / Operations; Workstream: Pilot; Portfolio simulation.
- 43: Owner: Steering Committee; Workstream: Pilot; Portfolio simulation.
- 44: Owner: Operations / IT / WFM; Workstream: Rollout; Portfolio simulation.
- 45: Owner: Operations / IT / QA; Workstream: Rollout; Portfolio simulation.
- 46: Owner: Operations / IT / WFM; Workstream: Rollout; Portfolio simulation.
- 47: Owner: Operations / WFM; Workstream: Rollout; Portfolio simulation.
- 48: Owner: IT / Operations / QA; Workstream: Hypercare; Portfolio simulation.
- 49: Owner: Operations / WFM; Workstream: Hypercare; Portfolio simulation.
- 50: Owner: BAU / Training; Workstream: Handover; Portfolio simulation.
- 51: Owner: Sponsor / BAU / PM; Workstream: Closure; Portfolio simulation.
