WBS,Phase,Task,Owner,Start Week,End Week,Duration Weeks,Deliverable,Gate
1.0,Scoping,Study scoping and protocol development,Program Manager,1,2,2,Signed research protocol,Gate 1
1.1,Scoping,Client alignment workshop and hypothesis definition,Program Manager / Brand Lead,1,1,1,Scoping charter,Gate 1
1.2,Scoping,Physician screener and inclusion/exclusion criteria,Research Analyst,1,2,2,Validated screener,Gate 1
1.3,Scoping,Discussion guide and survey questionnaire,Research Lead,2,2,1,Approved instruments,Gate 1
2.0,Compliance,Compliance review and localization,Compliance Lead / Operations,3,4,2,Ethics and localization sign-off,Gate 2
2.1,Compliance,Privacy and research-code review,Compliance / Privacy Lead,3,3,1,Documented compliance review,Gate 2
2.2,Compliance,Adverse-event intake and escalation SOP,Program Manager / PV Contact,3,3,1,Approved safety workflow,Gate 2
2.3,Compliance,Translation and cultural adaptation,Localization Lead,4,4,1,Localized instruments,Gate 2
3.0,Fieldwork,Recruitment and fieldwork,Fieldwork Director / Program Manager,5,9,5,Fieldwork completion,Gate 3
3.1,Fieldwork,Recruit and screen KOL and payer respondents,Country Fieldwork Leads,5,8,4,Verified recruitment logs,Gate 3
3.2,Fieldwork,Conduct qualitative interviews,Senior Moderators,5,9,5,Interview records and transcripts,Gate 3
3.3,Fieldwork,Launch and close physician online survey,Data Operations Lead,7,9,3,Survey dataset,Gate 3
4.0,Quality,Data validation and quality control,QA Lead / Data Analyst,9,11,3,Validated data matrix,Gate 4
4.1,Quality,Transcript and respondent verification,QA Specialist,9,10,2,Transcript audit log,Gate 4
4.2,Quality,Survey cleaning and exclusion review,Biostatistician / Data Analyst,10,10,1,Clean survey dataset,Gate 4
4.3,Quality,Qualitative coding and thematic matrix,Research Analyst,10,11,2,Thematic codebook,Gate 4
5.0,Delivery,Synthesis and executive delivery,Program Manager / Research Lead,12,14,3,Final executive report,Gate 5
5.1,Delivery,Storyboarding and client review,Program Manager / Senior Consultant,12,13,2,Draft findings deck,Gate 5
5.2,Delivery,Executive workshop and sign-off,Program Manager / Account Director,14,14,1,Final workshop and acceptance,Gate 5
